# 集团（股份、政务、金融、江分）资产云上线任务

Schedule from a web Gantt chart, 2025-07-18 to 2025-08-04.
Every day is a working day

## Schedule

| ID | WBS | Task | Duration | Start | Finish | Complete | inPeople |
| --- | --- | --- | --- | --- | --- | --- | --- |
| 2 | 1 | **UI模板差异化配置** | 1d | 2025-07-22 | 2025-07-22 |  |  |
| 3 | 1.1 | 政务 | 1d | 2025-07-22 | 2025-07-22 |  | 金鹏 |
| 4 | 1.2 | 金融 | 1d | 2025-07-22 | 2025-07-22 |  | 陈栎 |
| 5 | 1.3 | 股份 | 1d | 2025-07-22 | 2025-07-22 |  | 王世雷 |
| 6 | 2 | **工作流配置** | 1d | 2025-07-23 | 2025-07-23 |  |  |
| 7 | 2.1 | 政务 | 1d | 2025-07-23 | 2025-07-23 |  | 金鹏 |
| 8 | 2.2 | 金融 | 1d | 2025-07-23 | 2025-07-23 |  | 陈栎 |
| 9 | 2.3 | 股份（除江分） | 1d | 2025-07-23 | 2025-07-23 |  | 王世雷 |
| 10 | 2.4 | 江西分公司 | 1d | 2025-07-23 | 2025-07-23 |  | 郭加升、朱涛 |
| 11 | 3 | **407资产数据梳理及导入测试** | 1d | 2025-07-24 | 2025-07-24 |  |  |
| 12 | 3.1 | 政务 | 1d | 2025-07-24 | 2025-07-24 |  | 金鹏 |
| 13 | 3.2 | 金融 | 1d | 2025-07-24 | 2025-07-24 |  | 陈栎 |
| 14 | 3.3 | **股份（除江分）** | 1d | 2025-07-24 | 2025-07-24 |  | 王世雷 |
| 15 | 3.3.1 | 数据中心 | 1d | 2025-07-24 | 2025-07-24 |  | 王世雷、赵英杰 |
| 16 | 3.3.2 | 办公 | 1d | 2025-07-24 | 2025-07-24 |  | 闫雯 |
| 17 | 3.4 | 江西分公司 | 1d | 2025-07-24 | 2025-07-24 |  | 郭加升、朱涛 |
| 18 | 4 | **资产云推送使用信息变动到NC65程序开发** | 14d | 2025-07-18 | 2025-07-31 | 7% |  |
| 19 | 4.1 | 接口权限开放、表头数据开放 | 1d | 2025-07-18 | 2025-07-18 | 100% | 王世雷、张宏飞、陈冲、刘洋 |
| 20 | 4.2 | 程序开发 | 14d | 2025-07-18 | 2025-07-31 |  | 陈冲 |
| 21 | 5 | 各机构资产云全员应用授权程序开发 | 1d | 2025-07-18 | 2025-07-18 |  | 张砾君 |
| 22 | 6 | **全员资产应用PC端和移动端发单测试** | 1d | 2025-07-18 | 2025-07-18 |  |  |
| 23 | 6.1 | 政务 | 1d | 2025-07-18 | 2025-07-18 |  | 金鹏 |
| 24 | 6.2 | 金融 | 1d | 2025-07-18 | 2025-07-18 |  | 陈栎 |
| 25 | 6.3 | 江西分公司 | 1d | 2025-07-18 | 2025-07-18 |  | 郭加升、朱涛 |

| ID | WBS | Task | Duration | Start | Finish | inPeople |
| --- | --- | --- | --- | --- | --- | --- |
| 26 | 6.4 | **股份（除江分）** | 1d | 2025-07-18 | 2025-07-18 |  |
| 27 | 6.4.1 | 数据中心 | 1d | 2025-07-18 | 2025-07-18 | 王世雷 |
| 28 | 6.4.2 | 办公 | 1d | 2025-07-18 | 2025-07-18 | 闫雯 |
| 29 | 7 | **资产云上线** | 2d | 2025-08-01 | 2025-08-02 |  |
| 30 | 7.1 | 集团发文公告（申请停机窗口） | 1d | 2025-08-01 | 2025-08-01 | 王世雷、郭加升、金鹏、陈栎 |
| 31 | 7.2 | “设备管理系统”入口 | 1d | 2025-08-01 | 2025-08-01 | 王婷婷 |
| 32 | 7.3 | 处理存量单据 | 1d | 2025-08-01 | 2025-08-01 | 闫雯 |
| 33 | 7.4 | 设置407全员只读，回收权限 | 1d | 2025-08-01 | 2025-08-01 | 刘文明 |
| 34 | 7.5 | 执行407推NC程序 | 1d | 2025-08-01 | 2025-08-01 | 熊海情 |
| 35 | 7.6 | **资产数据导出、梳理、导入** | 1d | 2025-08-02 | 2025-08-02 |  |
| 36 | 7.6.1 | 资产云数据清理 | 1d | 2025-08-02 | 2025-08-02 | 郭杨、何勇、叶勋、孙艳军 |
| 37 | 7.6.2 | **股份（除江分）** | 1d | 2025-08-02 | 2025-08-02 |  |
| 38 | 7.6.2.1 | 数据中心 | 1d | 2025-08-02 | 2025-08-02 | 王世雷 |
| 39 | 7.6.2.2 | 办公 | 1d | 2025-08-02 | 2025-08-02 | 闫雯 |
| 40 | 7.6.3 | 政务 | 1d | 2025-08-02 | 2025-08-02 | 金鹏 |
| 41 | 7.6.4 | 金融 | 1d | 2025-08-02 | 2025-08-02 | 陈栎 |
| 42 | 7.6.5 | 江西分公司 | 1d | 2025-08-02 | 2025-08-02 | 郭加升、朱涛 |
| 43 | 7.7 | 发单验证 | 1d | 2025-08-02 | 2025-08-02 | 各机构负责人 |
| 44 | 8 | 资产使用迁移公告及邮件 | 1d | 2025-08-04 | 2025-08-04 | 王世雷 |

Notes:
- 30: 周五各机构提前发布公告通知本机构人员停机维护事项
- 32: 407系统完成存量单据处理
- 34: 把407历史的使用人使用部门变动信息推送到NC65财务系统
- 43: 各机构发单验证
- 44: 邮件通知人力、公告全员，资产管理迁移到资产云
